# Practica1EPI

Schedule from MS Project, 2018-11-12 to 2019-01-10, costs in €.

## Calendars

- Calendario Laboral Huelva: Mon-Fri 09:00-13:00, 15:00-19:00; Sat-Sun off. Exceptions (off unless hours are given): 2018-12-06 (Día de la Constitución Española), 2018-12-08 (Día de la Inmaculada Concepción), 2018-12-25 (Navidad), 2019-01-01 (Año Nuevo), 2019-01-07 (Cumpleaños Ignacio (Epifania del Señor)).

## Resources

| Resource | Group | Rate |
| --- | --- | --- |
| Carpintero |  | 35 |
| Intalador |  | 30 |
| Cabina Básica |  | 100 |
| Mostrador Estandar |  | 100 |
| Cristal Grabado |  | 12 |
| Regleta y extractor |  | 95 |
| Pomo con llave |  | 7.5 |
| Cajon tarificadores |  | 10 |
| Ordenador Servidor |  | 1500 |
| Ordenador Internet |  | 650 |
| Ordenador Juegos |  | 950 |
| Federico González | Analista | 29.16 |
| Cristina Urrutia | Analista | 29.16 |
| José Campos | Analista | 29.16 |
| Gloria Sauciuc | Analista | 29.16 |
| Mike Beer | Programador | 22.83 |
| Sistema Operativo Servidor |  | 300 |
| Sistema Operativo Terminal |  | 30 |
| Software Acceso Internet |  | 6 |
| Pack de Juegos en Red |  | 30 |
| Agustín Pérez | Programador | 22.83 |
| Jose Campos |  |  |

## Schedule

| ID | WBS | Task | Duration | Start | Finish | Predecessors | Total slack | Free slack | Constraint | Resources | Work | Cost |
| --- | --- | --- | --- | --- | --- | --- | --- | --- | --- | --- | --- | --- |
| 1 | 1 | **Montaje del mobiliario** | 12.38d | 2018-11-14 | 2018-11-30 |  | 0.62d |  |  |  | 171h | 17,435.5 |
| 2 | 1.1 | Montaje del mostrador | 2d | 2018-11-26 | 2018-11-27 | 3 | 3d |  |  | Carpintero; Mostrador Estandar | 16h | 828 |
| 3 | 1.2 | Montaje de las cabinas | 8d | 2018-11-14 | 2018-11-23 |  | 0.62d | 0d | start no earlier than 2018-11-14 | Carpintero; Cabina Básica [5000%] | 80h | 8,132.5 |
| 4 | 1.3 | Montaje de los accesorios | 75h | 2018-11-19 | 2018-11-30 | 3SS+3d | 0.62d |  |  | Intalador; Cristal Grabado [5000%]; Regleta y extractor [5000%]; Pomo con llave [5000%]; Cajon tarificadores [5000%] | 75h | 8,475 |
| 5 | 2 | **Montaje de la Infraestructura de Red y de los Equipos Informáticos** | 21d | 2018-12-03 | 2019-01-03 | 1FS+1ed | 0d |  |  |  | 72h | 37,401.46 |
| 6 | 2.1 | **Montaje de la Red Local** | 16d | 2018-12-03 | 2018-12-26 |  | 1d | 0d |  |  |  | 1,400 |
| 7 | 2.1.1 | Instalar Canaletas | 5d | 2018-12-03 | 2018-12-10 |  | 1d | 0d |  |  |  | 300 |
| 8 | 2.1.2 | Instalar Cables | 5d | 2018-12-11 | 2018-12-17 | 7 | 1d | 0d |  |  |  | 400 |
| 9 | 2.1.3 | Instalar Tomas de Red | 3d | 2018-12-18 | 2018-12-20 | 8 | 1d | 0d |  |  |  | 200 |
| 10 | 2.1.4 | Realización de Pruebas | 3d | 2018-12-21 | 2018-12-26 | 9 | 1d |  | start no earlier than 2018-11-29 |  |  | 500 |
| 11 | 2.2 | **Instalación de Equipos** | 5d | 2018-12-27 | 2019-01-03 | 6 | 0d |  |  |  | 72h | 36,001.46 |
| 12 | 2.2.1 | Montaje del Servidor | 1d | 2018-12-27 | 2018-12-27 |  | 1d | 0d |  | Ordenador Servidor; José Campos | 8h | 1,911.27 |
| 13 | 2.2.2 | **Montar Ordenadores Personales** | 4d | 2018-12-28 | 2019-01-03 | 12 |  |  |  |  | 64h | 34,090.19 |
| 14 | 2.2.2.1 | Montar Ordenadores Internet | 4d | 2018-12-28 | 2019-01-02 |  | 1d | 0d |  | Ordenador Internet [2000%]; Federico González | 32h | 14,045.09 |
| 15 | 2.2.2.2 | Montar Ordenadores Juegos | 4d | 2018-12-28 | 2019-01-02 | 14SS | 1d |  |  | Ordenador Juegos [2000%]; José Campos | 32h | 20,045.09 |
| 16 | 3 | **Desarrollo de una Aplicación Informática** | 32d | 2018-11-12 | 2018-12-27 |  | 4d |  |  |  | 672h | 20,641.9 |
| 17 | 3.1 | **Análisis** | 12.33d | 2018-11-12 | 2018-11-28 |  | 5.67d |  |  |  | 304h | 8,790.48 |
| 18 | 3.1.1 | Definición del sistema | 32h | 2018-11-12 | 2018-11-15 |  | 3.69d | 0d | start no earlier than 2018-11-12 | Federico González; José Campos; Gloria Sauciuc | 96h | 2,799.36 |
| 19 | 3.1.2 | Establecimiento de Requisitos | 40h | 2018-11-16 | 2018-11-22 | 18 | 6.67d | 0d | start no earlier than 2018-11-16 | Federico González | 48h | 1,423.04 |
| 20 | 3.1.3 | Análisis de Casos de Uso | 32h | 2018-11-16 | 2018-11-21 | 18 | 7.67d | 1d |  | Gloria Sauciuc | 32h | 933.12 |
| 21 | 3.1.4 | Análisis de Clases | 40h | 2018-11-16 | 2018-11-22 | 18 | 6.67d | 0d |  | José Campos | 48h | 1,434.64 |
| 22 | 3.1.5 | Identificación de Interfaces de Usuario | 24h | 2018-11-16 | 2018-11-20 | 18 | 8.67d | 2d |  | Mike Beer | 24h | 547.92 |
| 23 | 3.1.6 | Análisis de Consistencia | 10.67h | 2018-11-23 | 2018-11-26 | 19, 20, 21, 22 | 6.67d | 0d | start no earlier than 2018-11-23 | Federico González; Gloria Sauciuc; José Campos | 32h | 952.56 |
| 24 | 3.1.7 | Aprobación del Análisis (Supervisor) | 16h | 2018-11-26 | 2018-11-28 | 23 | 5.67d | 0d |  | Federico González | 16h | 466.56 |
| 25 | 3.1.8 | Aprobación del Análisis (Analista) | 8h | 2018-11-26 | 2018-11-27 | 23, 24SS | 6.67d | 1d |  | José Campos | 8h | 233.28 |

| ID | WBS | Task | Type | Duration | Start | Finish | Predecessors | Total slack | Free slack | Constraint | Resources | Work | Cost |
| --- | --- | --- | --- | --- | --- | --- | --- | --- | --- | --- | --- | --- | --- |
| 26 | 3.2 | **Diseño** |  | 7d | 2018-11-28 | 2018-12-10 |  | 5.67d |  |  |  | 176h | 5,407.83 |
| 27 | 3.2.1 | Definición de la Arquitectura del Sistema |  | 16h | 2018-11-28 | 2018-11-30 | 25, 24 | 5.67d | 0d |  | José Campos; Federico González | 32h | 933.12 |
| 28 | 3.2.2 | Diseño de Clases (Programador) |  | 16h | 2018-11-30 | 2018-12-04 | 27 | 5.67d | 0d |  | Gloria Sauciuc | 16h | 629.86 |
| 29 | 3.2.3 | Diseño de Clases (Analista) |  | 32h | 2018-11-30 | 2018-12-06 | 27, 28SS | 5.67d | 0d |  | José Campos | 32h | 1,026.43 |
| 30 | 3.2.4 | Diseño de Datos (Analista) |  | 32h | 2018-11-30 | 2018-12-06 | 27 | 5.67d | 0d |  | Federico González | 32h | 1,026.43 |
| 31 | 3.2.5 | Diseño de los Datos (Programador) |  | 32h | 2018-11-30 | 2018-12-06 | 27, 30SS | 5.67d | 0d |  | Mike Beer | 32h | 803.62 |
| 32 | 3.2.6 | Verificación del Diseño (Analista) |  | 8h | 2018-12-06 | 2018-12-07 | 28, 29, 30, 31 | 6d | 0d |  | José Campos | 8h | 261.27 |
| 33 | 3.2.7 | Verificación del Diseño (Programador) |  | 8h | 2018-12-06 | 2018-12-07 | 28, 29, 30, 31, 32SS | 6d | 0d |  | Mike Beer | 8h | 204.56 |
| 34 | 3.2.8 | Verificación del Diseño (Supervisor) |  | 16h | 2018-12-06 | 2018-12-10 | 29, 31, 28, 30, 32SS, 33SS | 6d | 0d |  | Federico González | 16h | 522.55 |
| 35 | 3.2.9 | Finalización del Diseño | milestone | 0d | 2018-12-10 | 2018-12-10 | 34 | 16.67d |  |  | Federico González |  |  |
| 36 | 3.3 | **Construcción** |  | 9.67d | 2018-12-10 | 2018-12-21 |  | 6.67d |  |  |  | 128h | 4,318.99 |
| 37 | 3.3.1 | Codificación de las Clases |  | 32h | 2018-12-10 | 2018-12-17 | 34 | 5.67d | 1.67d |  | Mike Beer; Gloria Sauciuc | 64h | 2,124.6 |
| 38 | 3.3.2 | Integración del Sistema |  | 16h | 2018-12-19 | 2018-12-20 | 37 | 4d | 0d | start no earlier than 2018-12-19 | Mike Beer; Gloria Sauciuc | 32h | 1,062.3 |
| 39 | 3.3.3 | Aprobación del Sistema (Programador) |  | 8h | 2018-12-21 | 2018-12-21 | 38 | 4d | 0d |  | Mike Beer; Gloria Sauciuc | 16h | 531.15 |
| 40 | 3.3.4 | Aprobación del Sistema (Supervisor) |  | 8h | 2018-12-21 | 2018-12-21 | 38, 39SS | 4d | 0d | start no earlier than 2018-12-20 | Federico González; José Campos | 16h | 600.95 |
| 41 | 3.3.5 | Aprobación del Sistema | milestone | 0d | 2018-12-21 | 2018-12-21 | 40, 39 | 7d |  |  | Federico González |  |  |
| 42 | 3.4 | **Pruebas** |  | 3d | 2018-12-24 | 2018-12-27 |  | 4d |  |  |  | 64h | 2,124.6 |
| 43 | 3.4.1 | Ejecución Pruebas Unitarias |  | 16h | 2018-12-24 | 2018-12-25 | 40 | 4d | 0d | start no earlier than 2018-12-21 | Mike Beer; Gloria Sauciuc | 32h | 1,062.3 |
| 44 | 3.4.2 | Ejecución de las Pruebas de Integración |  | 16h | 2018-12-26 | 2018-12-27 | 43 | 4d |  |  | Mike Beer; Gloria Sauciuc | 32h | 1,062.3 |
| 45 | 4 | **Instalación del Software y Prueba del Sistema** |  | 3.73d | 2019-01-04 | 2019-01-10 | 16, 5 | 0d |  |  |  | 136h | 6,204.94 |
| 46 | 4.1 | Instalar el Sistema Operativo |  | 13.91h | 2019-01-04 | 2019-01-08 |  | 0d |  |  | Sistema Operativo Servidor; Sistema Operativo Terminal [4000%]; Mike Beer; Gloria Sauciuc; Federico González; Jose Campos; Cristina Urrutia | 48h | 2,765.14 |
| 47 | 4.2 | Instalar Juegos |  | 8h | 2019-01-08 | 2019-01-09 | 46 | 0.5d |  |  | Pack de Juegos en Red [2000%]; Federico González; Jose Campos | 16h | 861.27 |
| 48 | 4.3 | Instalar Software Acceso Internet |  | 8h | 2019-01-08 | 2019-01-09 | 46 | 0.5d |  |  | Software Acceso Internet [4000%]; Gloria Sauciuc; Cristina Urrutia | 16h | 827.87 |
| 49 | 4.4 | Instalar Aplicación ETSISOFT |  | 12h | 2019-01-08 | 2019-01-09 | 46 | 0d |  |  | Mike Beer; José Campos | 24h | 698.75 |
| 50 | 4.5 | Prueba Global del Sistema |  | 7.98h | 2019-01-09 | 2019-01-10 | 47, 48, 49 | 0d |  |  | Federico González; Mike Beer; Gloria Sauciuc; José Campos; Cristina Urrutia [1%] | 32h | 1,051.91 |

| ID | WBS | Task | Duration | Start | Finish | Total slack | Constraint | Resources | Work | Cost |
| --- | --- | --- | --- | --- | --- | --- | --- | --- | --- | --- |
| 51 | 5 | **Reunión Jefa** | 17d | 2018-11-26 | 2018-12-19 | 12.73d |  |  | 48h | 1,236.38 |
| 52 | 5.1 | Reunión Jefa 1 | 3d | 2018-11-26 | 2018-11-28 | 24.32d | start no earlier than 2018-11-26 | Cristina Urrutia | 24h | 583.2 |
| 53 | 5.2 | Reunión Jefa 2 | 3d | 2018-12-17 | 2018-12-19 | 10.31d | start no earlier than 2018-12-17 | Cristina Urrutia | 24h | 653.18 |
| 54 | 6 | **Reunión Curritos** | 15d | 2018-11-27 | 2018-12-18 | 13.73d |  |  | 64h | 2,294.5 |
| 55 | 6.1 | Reunión Curritos 1 | 1d | 2018-11-27 | 2018-11-27 | 25.32d | start no earlier than 2018-11-27 | Federico González; Gloria Sauciuc; José Campos; Mike Beer | 32h | 1,090.8 |
| 56 | 6.2 | Reunión Curritos 2 | 1d | 2018-12-18 | 2018-12-18 | 11.31d | start no earlier than 2018-12-18 | Federico González; Gloria Sauciuc; José Campos; Mike Beer | 32h | 1,203.7 |
