# Proyecto1.2

Schedule from MS Project, 2019-11-11 to 2020-01-21, costs in €, A marks actual dates.

## Calendars

- ETSICalendar: Mon-Fri 09:00-13:00, 15:00-19:00; Sat-Sun off. Exceptions (off unless hours are given): 2019-12-06 (Día de la constitución), 2019-12-09 (Día de la Inmaculada Concepción), 2019-12-23 to 2020-01-06 (Navidades).

## Resources

| Resource | Rate |
| --- | --- |
| JefeA | 41.98 |
| AnalistaW | 32.56 |
| AnalistaD | 29.6 |
| AnalistaP | 26.64 |
| Administrativo | 19.76 |
| ProgramadorJ | 16.23 |
| ProgramadorJ2 | 16.23 |
| ProgramadorJ3 | 16.23 |
| AnalistaD2 | 29.6 |
| AnalistaD3 | 29.6 |

## Schedule

| ID | WBS | Task | Duration | Start | Finish | Predecessors | Complete | Remaining | Baseline start | Baseline finish | Baseline duration | Total slack | Constraint | Resources | Work | Actual work | Cost | Baseline cost | Actual cost |
| --- | --- | --- | --- | --- | --- | --- | --- | --- | --- | --- | --- | --- | --- | --- | --- | --- | --- | --- | --- |
| 1 | 1 | **Proyecto GESPROAGRO** | 38.75d | 2019-11-11 A | 2020-01-21 |  | 26% | 28.73d | 2019-11-11 | 2020-01-21 | 38.75d | 0d |  |  | 1080h | 224h | 29,109.05 | 24,909.05 | 7,726.33 |
| 2 | 1.1 | **Requerimientos de los usuarios** | 6d | 2019-11-11 A | 2019-11-18 A |  | 100% |  | 2019-11-11 | 2019-11-18 | 6d |  |  |  | 48h | 48h | 1,401.44 | 1,401.44 | 1,401.44 |
| 3 | 1.1.1 | Toma de requisitos de usuario | 5d | 2019-11-11 A | 2019-11-15 A |  | 100% |  | 2019-11-11 | 2019-11-15 | 5d |  |  | AnalistaP | 40h | 40h | 1,065.6 | 1,065.6 | 1,065.6 |
| 4 | 1.1.2 | Validación de los requisitos de usuario | 1d | 2019-11-18 A | 2019-11-18 A | 3 | 100% |  | 2019-11-18 | 2019-11-18 | 1d |  |  | JefeA | 8h | 8h | 335.84 | 335.84 | 335.84 |
| 5 | 1.2 | **Análisis de requisitos de software** | 15d | 2019-11-11 A | 2019-11-29 |  | 80% | 3d | 2019-11-11 | 2019-11-28 | 14d | 0d |  |  | 160h | 128h | 6,992.96 | 2,792.96 | 5,006.73 |
| 6 | 1.2.1 | Estudio de los requisitos Software | 6d | 2019-11-11 A | 2019-11-18 A |  | 100% |  | 2019-11-11 | 2019-11-18 | 6d |  |  | ProgramadorJ | 48h | 48h | 779.04 | 779.04 | 779.04 |
| 7 | 1.2.2 | Validación de los requisitos Software | 1d | 2019-11-19 A | 2019-11-19 A | 6 | 100% |  | 2019-11-19 | 2019-11-19 | 1d |  |  | JefeA | 8h | 8h | 335.84 | 335.84 | 335.84 |
| 8 | 1.2.3 | Instalación del Software necesario en los PCs | 6d | 2019-11-20 A | 2019-11-27 | 7 | 67% | 2d | 2019-11-20 | 2019-11-25 | 4d | 0d |  | ProgramadorJ | 48h | 32h | 4,719.36 | 519.36 | 3,159.37 |
| 9 | 1.2.4 | Preparación de los puestos de trabajo | 2d | 2019-11-28 | 2019-11-29 | 8 |  |  | 2019-11-26 | 2019-11-27 | 2d | 0d |  | AnalistaP | 16h |  | 426.24 | 426.24 |  |
| 10 | 1.2.5 | Preparación del servidor de desarrollo | 4d | 2019-11-19 A | 2019-11-28 A | 6 | 100% |  | 2019-11-19 | 2019-11-28 | 4d |  |  | ProgramadorJ | 32h | 32h | 519.36 | 519.36 | 519.36 |
| 11 | 1.2.6 | Preparación del servidor de preexplotación | 1d | 2019-11-22 A | 2019-11-22 A | 6 | 100% |  | 2019-11-22 | 2019-11-22 | 1d |  |  | AnalistaP | 8h | 8h | 213.12 | 213.12 | 213.12 |
| 12 | 1.3 | **Análisis de requisitos del Sistema** | 9d | 2019-11-19 A | 2019-11-29 A |  | 100% |  | 2019-11-19 | 2019-11-29 | 9d |  |  |  | 48h | 48h | 1,318.16 | 1,318.16 | 1,318.16 |
| 13 | 1.3.1 | Estimación de hardware necesario | 24h | 2019-11-19 A | 2019-11-21 A | 4 | 100% |  | 2019-11-19 | 2019-11-21 | 24h |  |  | AnalistaP | 24h | 24h | 639.36 | 639.36 | 639.36 |
| 14 | 1.3.2 | **Validación de HW necesario** | 6d | 2019-11-22 A | 2019-11-29 A |  | 100% |  | 2019-11-22 | 2019-11-29 | 6d |  |  |  | 24h | 24h | 678.8 | 678.8 | 678.8 |
| 15 | 1.3.2.1 | Validación de hardware necesario (Técnico) | 8h | 2019-11-29 A | 2019-11-29 A | 13 | 100% |  | 2019-11-29 | 2019-11-29 | 8h |  | finish no earlier than 2019-11-26 | ProgramadorJ; AnalistaP | 16h | 16h | 342.96 | 342.96 | 342.96 |
| 16 | 1.3.2.2 | Validación de hardware necesario (JP) | 8h | 2019-11-22 A | 2019-11-22 A | 13 | 100% |  | 2019-11-22 | 2019-11-22 | 8h |  |  | JefeA | 8h | 8h | 335.84 | 335.84 | 335.84 |
| 17 | 1.4 | **Diseño Preliminar** | 22.42d | 2019-12-02 | 2020-01-20 |  |  |  | 2019-12-02 | 2020-01-20 | 22.42d | 0d |  |  | 112h |  | 3,505.36 | 3,505.36 |  |
| 18 | 1.4.1 | Diseño de los datos y procesos | 3d | 2019-12-02 | 2019-12-04 | 2, 5, 12 |  |  | 2019-12-02 | 2019-12-04 | 3d | 0d |  | AnalistaD; JefeA; AnalistaD2; AnalistaD3 | 96h |  | 3,138.72 | 3,138.72 |  |
| 19 | 1.4.2 | Diseño del plan de pruebas | 2d | 2019-12-16 | 2020-01-20 | 18 |  |  | 2019-12-16 | 2020-01-20 | 2d | 1.33d |  | AnalistaD; ProgramadorJ | 16h |  | 366.64 | 366.64 |  |
| 20 | 1.5 | **Diseño Detallado** | 20.75d | 2019-12-05 | 2020-01-21 |  |  |  | 2019-12-05 | 2020-01-21 | 20.75d | 0d |  |  | 136h |  | 3,233.04 | 3,233.04 |  |
| 21 | 1.5.1 | Diseño gráfico de la aplicación | 5d | 2019-12-05 | 2019-12-13 | 18 |  |  | 2019-12-05 | 2019-12-13 | 5d | 15.75d |  | AnalistaW | 40h |  | 1,302.4 | 1,302.4 |  |
| 22 | 1.5.2 | **Diseño Técnico de componentes** | 20.75d | 2019-12-05 | 2020-01-21 |  |  |  | 2019-12-05 | 2020-01-21 | 20.75d | 0d |  |  | 96h |  | 1,930.64 | 1,930.64 |  |
| 23 | 1.5.2.1 | Presentación | 1d | 2019-12-05 | 2019-12-05 | 18 |  |  | 2019-12-05 | 2019-12-05 | 1d | 19.75d |  | JefeA | 8h |  | 335.84 | 335.84 |  |
| 24 | 1.5.2.2 | Mantenimiento de Explotación Agrícola | 2d | 2019-12-12 | 2019-12-20 | 18 |  |  | 2019-12-12 | 2019-12-20 | 2d | 11.58d |  | AnalistaP | 16h |  | 426.24 | 426.24 |  |
| 25 | 1.5.2.3 | Mantenimiento de Historial; Reservas, Tarifas y Eventos | 4d | 2020-01-13 | 2020-01-17 | 18 |  |  | 2020-01-13 | 2020-01-17 | 4d | 2.33d |  | ProgramadorJ | 32h |  | 519.36 | 519.36 |  |
| 26 | 1.5.2.4 | Localización | 5d | 2019-12-12 | 2020-01-21 | 18 |  |  | 2019-12-12 | 2020-01-21 | 5d | 0d |  | ProgramadorJ | 40h |  | 649.2 | 649.2 |  |

| ID | WBS | Task | Duration | Start | Finish | Predecessors | Baseline start | Baseline finish | Baseline duration | Total slack | Free slack | Constraint | Resources | Work | Cost | Baseline cost |
| --- | --- | --- | --- | --- | --- | --- | --- | --- | --- | --- | --- | --- | --- | --- | --- | --- |
| 27 | 1.6 | **Diseño de la Base de Datos** | 8d | 2019-12-05 | 2019-12-18 |  | 2019-12-05 | 2019-12-18 | 8d | 11.33d |  |  |  | 24h | 809.44 | 809.44 |
| 28 | 1.6.1 | Diseño de Tablas y Relaciones | 3d | 2019-12-05 | 2019-12-11 | 18 | 2019-12-05 | 2019-12-11 | 3d | 11.33d | 0d |  |  |  |  |  |
| 29 | 1.6.2 | **Validación del diseño de la BD** | 5d | 2019-12-12 | 2019-12-18 |  | 2019-12-12 | 2019-12-18 | 5d | 11.33d |  |  |  | 24h | 809.44 | 809.44 |
| 30 | 1.6.2.1 | Validación del diseño de la BD (Diseñador) | 2d | 2019-12-17 | 2019-12-18 | 28 | 2019-12-17 | 2019-12-18 | 2d | 12.75d |  | finish no earlier than 2019-12-18 | AnalistaD | 16h | 473.6 | 473.6 |
| 31 | 1.6.2.2 | Validación del diseño de la BD(JP) | 1d | 2019-12-12 | 2019-12-12 | 28 | 2019-12-12 | 2019-12-12 | 1d | 11.33d | 0d |  | JefeA | 8h | 335.84 | 335.84 |
| 32 | 1.7 | **Construcción** | 13d | 2019-12-03 | 2020-01-07 |  | 2019-12-03 | 2020-01-07 | 13d | 0.33d |  |  |  | 288h | 6,256.41 | 6,256.41 |
| 33 | 1.7.1 | Construcción del Prototipo | 3d | 2019-12-11 | 2019-12-13 | 18SS+5d | 2019-12-11 | 2019-12-13 | 3d | 15.75d |  |  |  |  |  |  |
| 34 | 1.7.2 | **Construcción de la BD** | 7d | 2019-12-13 | 2020-01-07 |  | 2019-12-13 | 2020-01-07 | 7d | 9.75d |  |  |  | 40h | 1,136.64 | 1,136.64 |
| 35 | 1.7.2.1 | Construcción de la BD (Diseñador) | 3d | 2019-12-19 | 2020-01-07 | 31 | 2019-12-19 | 2020-01-07 | 3d | 9.75d |  | finish no earlier than 2020-01-07 | AnalistaD | 24h | 710.4 | 710.4 |
| 36 | 1.7.2.2 | Construcción de la BD (Programador) | 2d | 2019-12-13 | 2019-12-20 | 31 | 2019-12-13 | 2019-12-20 | 2d | 11.33d |  |  | AnalistaP | 16h | 426.24 | 426.24 |
| 37 | 1.7.3 | Codificación | 7.75d | 2019-12-03 | 2019-12-16 | 18FS-2d | 2019-12-03 | 2019-12-16 | 7.75d | 0.33d | 0d |  | ProgramadorJ; AnalistaP; AnalistaD; ProgramadorJ2; ProgramadorJ3 | 248h | 5,119.77 | 5,119.77 |
| 38 | 1.8 | **Pruebas** | 8.67d | 2019-12-16 | 2020-01-13 |  | 2019-12-16 | 2020-01-13 | 8.67d | 0.33d | 0d |  |  | 96h | 1,696.88 | 1,696.88 |
| 39 | 1.8.1 | Pruebas Unitarias | 1d | 2019-12-16 | 2019-12-17 | 37 | 2019-12-16 | 2019-12-17 | 1d | 0.33d | 0d |  | AnalistaP; ProgramadorJ2; ProgramadorJ3 | 24h | 472.8 | 472.8 |
| 40 | 1.8.2 | Pruebas de Integración | 0.67d | 2019-12-17 | 2019-12-18 | 39 | 2019-12-17 | 2019-12-18 | 0.67d | 0.33d | 0d |  | AnalistaP; ProgramadorJ2; ProgramadorJ3 | 16h | 315.2 | 315.2 |
| 41 | 1.8.3 | Pruebas de Sistema | 7d | 2019-12-18 | 2020-01-13 | 40 | 2019-12-18 | 2020-01-13 | 7d | 0.33d |  |  | ProgramadorJ | 56h | 908.88 | 908.88 |
| 42 | 1.9 | **Demostración a los usuarios** | 6d | 2020-01-13 | 2020-01-21 |  | 2020-01-13 | 2020-01-21 | 6d | 0.33d |  |  |  | 48h | 1,524.16 | 1,524.16 |
| 43 | 1.9.1 | Entrenamiento de usuarios | 32h | 2020-01-13 | 2020-01-17 | 12, 38 | 2020-01-13 | 2020-01-17 | 32h | 0.33d | 0d |  | AnalistaP | 32h | 852.48 | 852.48 |
| 44 | 1.9.2 | Validación del producto por los usuarios | 2d | 2020-01-17 | 2020-01-21 | 43 | 2020-01-17 | 2020-01-21 | 2d | 0.33d |  |  | JefeA | 16h | 671.68 | 671.68 |
| 45 | 1.10 | **Documentación** | 19.67d | 2019-11-28 | 2020-01-14 |  | 2019-11-28 | 2020-01-14 | 19.67d | 5.33d |  |  |  | 120h | 2,371.2 | 2,371.2 |
| 46 | 1.10.1 | Documentación técnica de proyecto | 10d | 2019-11-28 | 2019-12-16 | 37FF | 2019-11-28 | 2019-12-16 | 10d | 15d |  |  | Administrativo | 80h | 1,580.8 | 1,580.8 |
| 47 | 1.10.2 | Documentación de usuarios | 5d | 2020-01-07 | 2020-01-14 | 40FS+3d | 2020-01-07 | 2020-01-14 | 5d | 5.33d |  |  | Administrativo | 40h | 790.4 | 790.4 |
