# Proyecto1.1_-_Linea_Base

Schedule from MS Project, 2019-11-11 to 2020-01-20, costs in €, A marks actual dates.

## Calendars

- ETSICalendar: Mon-Fri 09:00-13:00, 15:00-19:00; Sat-Sun off. Exceptions (off unless hours are given): 2019-12-06 (Día de la constitución), 2019-12-09 (Día de la Inmaculada Concepción), 2019-12-23 to 2020-01-06 (Navidades).

## Resources

| Resource | Rate |
| --- | --- |
| JefeA | 41.98 |
| AnalistaW | 32.56 |
| AnalistaD | 29.6 |
| AnalistaP | 26.64 |
| Administrativo | 19.76 |
| ProgramadorJ | 16.23 |

## Schedule

| ID | WBS | Task | Duration | Start | Finish | Predecessors | Complete | Remaining | Baseline start | Baseline finish | Baseline duration | Total slack | Free slack | Constraint | Resources | Work | Actual work | Cost | Baseline cost | Actual cost |
| --- | --- | --- | --- | --- | --- | --- | --- | --- | --- | --- | --- | --- | --- | --- | --- | --- | --- | --- | --- | --- |
| 1 | 1 | **Proyecto GESPROAGRO** | 37.59d | 2019-11-11 A | 2020-01-20 |  | 24% | 28.52d | 2019-11-11 | 2020-01-20 | 37.42d | 0d |  |  |  | 1160h | 232h | 35,167.08 | 30,665.67 | 8,602.21 |
| 2 | 1.1 | **Requerimientos de los usuarios** | 6d | 2019-11-11 A | 2019-11-18 A |  | 100% |  | 2019-11-11 | 2019-11-18 | 6d |  |  |  |  | 48h | 48h | 1,401.44 | 1,401.44 | 1,401.44 |
| 3 | 1.1.1 | Toma de requisitos de usuario | 5d | 2019-11-11 A | 2019-11-15 A |  | 100% |  | 2019-11-11 | 2019-11-15 | 5d |  |  |  | AnalistaP | 40h | 40h | 1,065.6 | 1,065.6 | 1,065.6 |
| 4 | 1.1.2 | Validación de los requisitos de usuario | 1d | 2019-11-18 A | 2019-11-18 A | 3 | 100% |  | 2019-11-18 | 2019-11-18 | 1d |  |  |  | JefeA | 8h | 8h | 335.84 | 335.84 | 335.84 |
| 5 | 1.2 | **Análisis de requisitos de software** | 15.51d | 2019-11-11 A | 2019-12-02 |  | 82% | 2.79d | 2019-11-11 | 2019-11-27 | 12.5d | 0.01d | 0d |  |  | 192h | 160h | 7,914.68 | 3,696 | 6,525.89 |
| 6 | 1.2.1 | Estudio de los requisitos Software | 3d | 2019-11-11 A | 2019-11-13 A |  | 100% |  | 2019-11-11 | 2019-11-13 | 3d |  |  |  | AnalistaW; AnalistaD | 48h | 48h | 1,491.84 | 1,491.84 | 1,491.84 |
| 7 | 1.2.2 | Validación de los requisitos Software | 1d | 2019-11-14 A | 2019-11-14 A | 6 | 100% |  | 2019-11-14 | 2019-11-14 | 1d |  |  |  | JefeA | 8h | 8h | 335.84 | 335.84 | 335.84 |
| 8 | 1.2.3 | Instalación del Software necesario en los PCs | 10d | 2019-11-15 A | 2019-11-28 | 7 | 80% | 2d | 2019-11-15 | 2019-11-20 | 4d | 0.01d | 0d |  | ProgramadorJ | 80h | 64h | 4,719.36 | 519.36 | 3,775.49 |
| 9 | 1.2.4 | Preparación de los puestos de trabajo | 1.51d | 2019-11-29 | 2019-12-02 | 8 |  |  | 2019-11-25 | 2019-11-27 | 2d | 0.01d |  |  | AnalistaP | 16h |  | 444.92 | 426.24 |  |
| 10 | 1.2.5 | Preparación del servidor de desarrollo | 3d | 2019-11-14 A | 2019-11-22 A | 6 | 100% |  | 2019-11-14 | 2019-11-22 | 3d |  |  |  | AnalistaP; AnalistaD; ProgramadorJ | 32h | 32h | 709.6 | 709.6 | 709.6 |
| 11 | 1.2.6 | Preparación del servidor de preexplotación | 1d | 2019-11-22 A | 2019-11-25 A | 6 | 100% |  | 2019-11-22 | 2019-11-25 | 1d |  |  |  | AnalistaP | 8h | 8h | 213.12 | 213.12 | 213.12 |
| 12 | 1.3 | **Análisis de requisitos del Sistema** | 8.67d | 2019-11-19 A | 2019-11-29 |  | 55% | 3.94d | 2019-11-19 | 2019-11-26 | 6d | 0.86d | 0.85d |  |  | 48h | 24h | 1,428.8 | 1,428.8 | 674.88 |
| 13 | 1.3.1 | Estimación de hardware necesario | 16h | 2019-11-19 A | 2019-11-21 A | 4 | 100% |  | 2019-11-19 | 2019-11-21 | 16h |  |  |  | AnalistaP; AnalistaD | 24h | 24h | 674.88 | 674.88 | 674.88 |
| 14 | 1.3.2 | **Validación de HW necesario** | 6.17d | 2019-11-21 | 2019-11-29 |  |  |  | 2019-11-21 | 2019-11-26 | 3.5d | 0.86d |  |  |  | 24h |  | 753.92 | 753.92 |  |
| 15 | 1.3.2.1 | Validación de hardware necesario (Técnico) | 5.33h | 2019-11-29 | 2019-11-29 | 13 |  |  | 2019-11-26 | 2019-11-26 | 5.33h | 0.86d |  | finish no earlier than 2019-11-26 | ProgramadorJ; AnalistaW; AnalistaD | 16h |  | 418.08 | 418.08 |  |
| 16 | 1.3.2.2 | Validación de hardware necesario (JP) | 8h | 2019-11-21 | 2019-11-22 | 13 |  |  | 2019-11-21 | 2019-11-22 | 8h | 6.02d |  |  | JefeA | 8h |  | 335.84 | 335.84 |  |
| 17 | 1.4 | **Diseño Preliminar** | 14.28d | 2019-12-02 | 2020-01-08 |  |  |  | 2019-11-27 | 2020-01-10 | 18.55d | 0.01d |  |  |  | 112h |  | 4,048.47 | 4,017.53 |  |
| 18 | 1.4.1 | Diseño de los datos y procesos | 4.58d | 2019-12-02 | 2019-12-11 | 2, 5, 12 |  |  | 2019-11-27 | 2019-12-04 | 4.88d | 0.01d | 0d |  | AnalistaD; JefeA | 96h |  | 3,582.79 | 3,551.85 |  |
| 19 | 1.4.2 | Diseño del plan de pruebas | 1.74d | 2020-01-07 | 2020-01-08 | 18 |  |  | 2019-12-18 | 2020-01-10 | 2d | 7.8d |  |  | JefeA; ProgramadorJ | 16h |  | 465.68 | 465.68 |  |
| 20 | 1.5 | **Diseño Detallado** | 11.6d | 2019-12-16 | 2020-01-16 |  |  |  | 2019-12-12 | 2020-01-16 | 14.33d | 2.24d |  |  |  | 136h |  | 3,357.96 | 3,149.76 |  |
| 21 | 1.5.1 | Diseño gráfico de la aplicación | 5d | 2019-12-17 | 2020-01-08 | 18 |  |  | 2019-12-13 | 2019-12-20 | 5d | 7.74d |  |  | AnalistaW | 40h |  | 1,302.4 | 1,302.4 |  |
| 22 | 1.5.2 | **Diseño Técnico de componentes** | 11.6d | 2019-12-16 | 2020-01-16 |  |  |  | 2019-12-12 | 2020-01-16 | 14.33d | 2.24d |  |  |  | 96h |  | 2,055.56 | 1,847.36 |  |
| 23 | 1.5.2.1 | Presentación | 1d | 2020-01-08 | 2020-01-09 | 18 |  |  | 2019-12-19 | 2019-12-20 | 1d | 6.8d |  |  | JefeA | 8h |  | 335.84 | 335.84 |  |
| 24 | 1.5.2.2 | Mantenimiento de Explotación Agrícola | 2d | 2019-12-18 | 2020-01-13 | 18 |  |  | 2019-12-12 | 2020-01-13 | 2d | 5.2d |  |  | AnalistaP; ProgramadorJ | 16h |  | 342.96 | 342.96 |  |
| 25 | 1.5.2.3 | Mantenimiento de Historial; Reservas, Tarifas y Eventos | 4d | 2019-12-16 | 2020-01-13 | 18 |  |  | 2019-12-19 | 2020-01-15 | 4d | 4.74d |  |  | ProgramadorJ | 32h |  | 519.36 | 519.36 |  |
| 26 | 1.5.2.4 | Localización | 5d | 2019-12-16 | 2020-01-16 | 18 |  |  | 2019-12-12 | 2020-01-16 | 5d | 2.24d |  |  | ProgramadorJ; AnalistaP | 40h |  | 857.4 | 649.2 |  |

| ID | WBS | Task | Duration | Start | Finish | Predecessors | Baseline start | Baseline finish | Baseline duration | Total slack | Free slack | Constraint | Resources | Work | Cost | Baseline cost |
| --- | --- | --- | --- | --- | --- | --- | --- | --- | --- | --- | --- | --- | --- | --- | --- | --- |
| 27 | 1.6 | **Diseño de la Base de Datos** | 34.59d | 2019-11-11 | 2020-01-15 |  | 2019-11-11 | 2020-01-20 | 37.42d | 3d |  |  |  | 48h | 1,668.4 | 1,668.4 |
| 28 | 1.6.1 | Diseño de Tablas y Relaciones | 3d | 2019-12-18 | 2020-01-13 | 18 | 2019-12-16 | 2020-01-20 | 3d | 5d |  |  | AnalistaD; JefeA | 24h | 858.96 | 858.96 |
| 29 | 1.6.2 | **Validación del diseño de la BD** | 34.59d | 2019-11-11 | 2020-01-15 |  | 2019-11-11 | 2020-01-10 | 31.46d | 3d |  |  |  | 24h | 809.44 | 809.44 |
| 30 | 1.6.2.1 | Validación del diseño de la BD (Diseñador) | 2d | 2020-01-13 | 2020-01-15 |  | 2019-12-17 | 2020-01-10 | 2d | 3d |  | finish no earlier than 2019-12-18 | AnalistaD | 16h | 473.6 | 473.6 |
| 31 | 1.6.2.2 | Validación del diseño de la BD(JP) | 1d | 2019-11-11 | 2019-11-11 |  | 2019-11-11 | 2019-11-11 | 1d | 25d | 0d |  | JefeA | 8h | 335.84 | 335.84 |
| 32 | 1.7 | **Construcción** | 32.59d | 2019-11-18 | 2020-01-20 |  | 2019-11-18 | 2020-01-17 | 31.88d | 0d |  |  |  | 312h | 9,124.97 | 9,124.97 |
| 33 | 1.7.1 | Construcción del Prototipo | 2.06d | 2019-12-20 | 2020-01-20 | 18SS+5d | 2019-12-13 | 2020-01-17 | 3d | 0.21d |  |  | ProgramadorJ; AnalistaP | 24h | 514.44 | 514.44 |
| 34 | 1.7.2 | **Construcción de la BD** | 32.59d | 2019-11-18 | 2020-01-20 |  | 2019-11-18 | 2020-01-15 | 29.46d | 0d |  |  |  | 40h | 1,136.64 | 1,136.64 |
| 35 | 1.7.2.1 | Construcción de la BD (Diseñador) | 3d | 2020-01-15 | 2020-01-20 | 31 | 2020-01-10 | 2020-01-15 | 3d | 0d |  | finish no earlier than 2020-01-07 | AnalistaD | 24h | 710.4 | 710.4 |
| 36 | 1.7.2.2 | Construcción de la BD (Programador) | 2d | 2019-11-18 | 2019-11-21 | 31 | 2019-11-18 | 2019-11-21 | 2d | 29.09d |  |  | AnalistaP | 16h | 426.24 | 426.24 |
| 37 | 1.7.3 | Codificación | 9.21d | 2019-12-05 | 2019-12-20 | 18FS-2d | 2019-12-02 | 2019-12-17 | 9.21d | 0.01d | 0d |  | ProgramadorJ; AnalistaP; AnalistaD; AnalistaW; JefeA | 248h | 7,473.89 | 7,473.89 |
| 38 | 1.8 | **Pruebas** | 4.62d | 2019-12-20 | 2020-01-10 |  | 2019-12-17 | 2020-01-08 | 5.33d | 0.01d | 0d |  |  | 96h | 2,402.36 | 2,358.77 |
| 39 | 1.8.1 | Pruebas Unitarias | 0.76d | 2019-12-20 | 2020-01-07 | 37 | 2019-12-17 | 2019-12-18 | 1d | 0.01d | 0d |  | AnalistaP; ProgramadorJ; AnalistaD | 24h | 605.14 | 579.76 |
| 40 | 1.8.2 | Pruebas de Integración | 1.52d | 2020-01-07 | 2020-01-08 | 39 | 2019-12-18 | 2019-12-20 | 2d | 0.01d | 0d |  | AnalistaP | 16h | 444.44 | 426.24 |
| 41 | 1.8.3 | Pruebas de Sistema | 2.33d | 2020-01-08 | 2020-01-10 | 40 | 2019-12-20 | 2020-01-08 | 2.33d | 0.68d |  |  | ProgramadorJ; AnalistaP; AnalistaD | 56h | 1,352.77 | 1,352.77 |
| 42 | 1.9 | **Demostración a los usuarios** | 5d | 2020-01-10 | 2020-01-17 |  | 2020-01-08 | 2020-01-15 | 5d | 0.68d |  |  |  | 48h | 1,448.8 | 1,448.8 |
| 43 | 1.9.1 | Entrenamiento de usuarios | 32h | 2020-01-10 | 2020-01-16 | 12, 38 | 2020-01-08 | 2020-01-14 | 32h | 0.68d | 0d |  | AnalistaP | 32h | 852.48 | 852.48 |
| 44 | 1.9.2 | Validación del producto por los usuarios | 1d | 2020-01-16 | 2020-01-17 | 43 | 2020-01-14 | 2020-01-15 | 1d | 0.68d |  |  | JefeA; AnalistaW | 16h | 596.32 | 596.32 |
| 45 | 1.10 | **Documentación** | 20.29d | 2019-12-04 | 2020-01-20 |  | 2019-11-29 | 2020-01-16 | 21d | 0.01d |  |  |  | 120h | 2,371.2 | 2,371.2 |
| 46 | 1.10.1 | Documentación técnica de proyecto | 10d | 2019-12-04 | 2019-12-20 | 37FF | 2019-11-29 | 2019-12-17 | 10d | 10.3d |  |  | Administrativo | 80h | 1,580.8 | 1,580.8 |
| 47 | 1.10.2 | Documentación de usuarios | 5d | 2020-01-13 | 2020-01-20 | 40FS+3d | 2020-01-09 | 2020-01-16 | 5d | 0.01d |  |  | Administrativo | 40h | 790.4 | 790.4 |
