# Proyecto1.2_-_Linea_Base

Schedule from MS Project, 2019-11-11 to 2020-01-21, costs in €, A marks actual dates.

## Calendars

- ETSICalendar: Mon-Fri 09:00-13:00, 15:00-19:00; Sat-Sun off. Exceptions (off unless hours are given): 2019-12-06 (Día de la constitución), 2019-12-09 (Día de la Inmaculada Concepción), 2019-12-23 to 2020-01-06 (Navidades).

## Resources

| Resource | Rate |
| --- | --- |
| JefeA | 41.98 |
| AnalistaW | 32.56 |
| AnalistaD | 29.6 |
| AnalistaP | 26.64 |
| Administrativo | 19.76 |
| ProgramadorJ | 16.23 |
| AnalistaD B | 29.6 |

## Schedule

| ID | WBS | Task | Duration | Start | Finish | Predecessors | Complete | Remaining | Baseline start | Baseline finish | Baseline duration | Total slack | Constraint | Resources | Work | Actual work | Cost | Baseline cost | Actual cost |
| --- | --- | --- | --- | --- | --- | --- | --- | --- | --- | --- | --- | --- | --- | --- | --- | --- | --- | --- | --- |
| 1 | 1 | **Proyecto GESPROAGRO** | 38.57d | 2019-11-11 A | 2020-01-21 |  | 23% | 29.75d | 2019-11-11 | 2020-01-21 | 38.54d | 0d |  |  | 1200h | 232h | 35,731.42 | 30,549.66 | 8,602.21 |
| 2 | 1.1 | **Requerimientos de los usuarios** | 6d | 2019-11-11 A | 2019-11-18 A |  | 100% |  | 2019-11-11 | 2019-11-18 | 6d |  |  |  | 48h | 48h | 1,401.44 | 1,401.44 | 1,401.44 |
| 3 | 1.1.1 | Toma de requisitos de usuario | 5d | 2019-11-11 A | 2019-11-15 A |  | 100% |  | 2019-11-11 | 2019-11-15 | 5d |  |  | AnalistaP | 40h | 40h | 1,065.6 | 1,065.6 | 1,065.6 |
| 4 | 1.1.2 | Validación de los requisitos de usuario | 1d | 2019-11-18 A | 2019-11-18 A | 3 | 100% |  | 2019-11-18 | 2019-11-18 | 1d |  |  | JefeA | 8h | 8h | 335.84 | 335.84 | 335.84 |
| 5 | 1.2 | **Análisis de requisitos de software** | 16d | 2019-11-11 A | 2019-12-02 |  | 80% | 3.2d | 2019-11-11 | 2019-11-27 | 12.5d | 0d |  |  | 192h | 160h | 7,896 | 3,696 | 6,525.89 |
| 6 | 1.2.1 | Estudio de los requisitos Software | 3d | 2019-11-11 A | 2019-11-13 A |  | 100% |  | 2019-11-11 | 2019-11-13 | 3d |  |  | AnalistaW; AnalistaD | 48h | 48h | 1,491.84 | 1,491.84 | 1,491.84 |
| 7 | 1.2.2 | Validación de los requisitos Software | 1d | 2019-11-14 A | 2019-11-14 A | 6 | 100% |  | 2019-11-14 | 2019-11-14 | 1d |  |  | JefeA | 8h | 8h | 335.84 | 335.84 | 335.84 |
| 8 | 1.2.3 | Instalación del Software necesario en los PCs | 10d | 2019-11-15 A | 2019-11-28 | 7 | 80% | 2d | 2019-11-15 | 2019-11-20 | 4d | 0d |  | ProgramadorJ | 80h | 64h | 4,719.36 | 519.36 | 3,775.49 |
| 9 | 1.2.4 | Preparación de los puestos de trabajo | 2d | 2019-11-29 | 2019-12-02 | 8 |  |  | 2019-11-25 | 2019-11-27 | 2d | 0d |  | AnalistaP | 16h |  | 426.24 | 426.24 |  |
| 10 | 1.2.5 | Preparación del servidor de desarrollo | 3d | 2019-11-14 A | 2019-11-22 A | 6 | 100% |  | 2019-11-14 | 2019-11-22 | 3d |  |  | AnalistaP; AnalistaD; ProgramadorJ | 32h | 32h | 709.6 | 709.6 | 709.6 |
| 11 | 1.2.6 | Preparación del servidor de preexplotación | 1d | 2019-11-22 A | 2019-11-25 A | 6 | 100% |  | 2019-11-22 | 2019-11-25 | 1d |  |  | AnalistaP | 8h | 8h | 213.12 | 213.12 | 213.12 |
| 12 | 1.3 | **Análisis de requisitos del Sistema** | 8.67d | 2019-11-19 A | 2019-11-29 |  | 55% | 3.94d | 2019-11-19 | 2019-11-26 | 6d | 1.33d |  |  | 48h | 24h | 1,428.8 | 1,428.8 | 674.88 |
| 13 | 1.3.1 | Estimación de hardware necesario | 16h | 2019-11-19 A | 2019-11-21 A | 4 | 100% |  | 2019-11-19 | 2019-11-21 | 16h |  |  | AnalistaP; AnalistaD | 24h | 24h | 674.88 | 674.88 | 674.88 |
| 14 | 1.3.2 | **Validación de HW necesario** | 6.17d | 2019-11-21 | 2019-11-29 |  |  |  | 2019-11-21 | 2019-11-26 | 3.5d | 1.33d |  |  | 24h |  | 753.92 | 753.92 |  |
| 15 | 1.3.2.1 | Validación de hardware necesario (Técnico) | 5.33h | 2019-11-29 | 2019-11-29 | 13 |  |  | 2019-11-26 | 2019-11-26 | 5.33h | 1.33d | finish no earlier than 2019-11-26 | ProgramadorJ; AnalistaW; AnalistaD | 16h |  | 418.08 | 418.08 |  |
| 16 | 1.3.2.2 | Validación de hardware necesario (JP) | 8h | 2019-11-21 | 2019-11-22 | 13 |  |  | 2019-11-21 | 2019-11-22 | 8h | 6.5d |  | JefeA | 8h |  | 335.84 | 335.84 |  |
| 17 | 1.4 | **Diseño Preliminar** | 17.82d | 2019-12-03 | 2020-01-14 |  |  |  | 2019-11-27 | 2020-01-14 | 21.17d | 0d |  |  | 112h |  | 3,703.44 | 3,901.52 |  |
| 18 | 1.4.1 | Diseño de los datos y procesos | 5d | 2019-12-03 | 2019-12-11 | 2, 5, 12 |  |  | 2019-11-27 | 2019-12-05 | 6d | 0d |  | AnalistaD; JefeA; AnalistaD B | 96h |  | 3,237.76 | 3,435.84 |  |
| 19 | 1.4.2 | Diseño del plan de pruebas | 2d | 2019-12-19 | 2020-01-14 | 18 |  |  | 2019-12-19 | 2020-01-14 | 2d | 4.75d |  | JefeA; ProgramadorJ | 16h |  | 465.68 | 465.68 |  |
| 20 | 1.5 | **Diseño Detallado** | 14.33d | 2019-12-16 | 2020-01-20 |  |  |  | 2019-12-16 | 2020-01-21 | 14.74d | 0.75d |  |  | 136h |  | 3,149.76 | 3,149.76 |  |
| 21 | 1.5.1 | Diseño gráfico de la aplicación | 5d | 2019-12-17 | 2020-01-08 | 18 |  |  | 2019-12-16 | 2020-01-07 | 5d | 9.21d |  | AnalistaW | 40h |  | 1,302.4 | 1,302.4 |  |
| 22 | 1.5.2 | **Diseño Técnico de componentes** | 14.33d | 2019-12-16 | 2020-01-20 |  |  |  | 2019-12-16 | 2020-01-21 | 14.33d | 0.75d |  |  | 96h |  | 1,847.36 | 1,847.36 |  |
| 23 | 1.5.2.1 | Presentación | 1d | 2019-12-20 | 2020-01-07 | 18 |  |  | 2019-12-20 | 2020-01-07 | 1d | 10.33d |  | JefeA | 8h |  | 335.84 | 335.84 |  |
| 24 | 1.5.2.2 | Mantenimiento de Explotación Agrícola | 2d | 2019-12-16 | 2020-01-15 | 18 |  |  | 2019-12-16 | 2020-01-15 | 2d | 3.75d |  | AnalistaP; ProgramadorJ | 16h |  | 342.96 | 342.96 |  |
| 25 | 1.5.2.3 | Mantenimiento de Historial; Reservas, Tarifas y Eventos | 4d | 2020-01-07 | 2020-01-17 | 18 |  |  | 2020-01-07 | 2020-01-20 | 4d | 1.75d |  | ProgramadorJ | 32h |  | 519.36 | 519.36 |  |
| 26 | 1.5.2.4 | Localización | 5d | 2019-12-16 | 2020-01-20 | 18 |  |  | 2019-12-16 | 2020-01-21 | 5d | 0.75d |  | ProgramadorJ | 40h |  | 649.2 | 649.2 |  |

| ID | WBS | Task | Duration | Start | Finish | Predecessors | Baseline start | Baseline finish | Baseline duration | Total slack | Free slack | Constraint | Resources | Work | Cost | Baseline cost |
| --- | --- | --- | --- | --- | --- | --- | --- | --- | --- | --- | --- | --- | --- | --- | --- | --- |
| 27 | 1.6 | **Diseño de la Base de Datos** | 38.04d | 2019-11-11 | 2020-01-21 |  | 2019-11-11 | 2020-01-21 | 38.54d | 0.53d |  |  |  | 48h | 1,594.12 | 1,668.4 |
| 28 | 1.6.1 | Diseño de Tablas y Relaciones | 3d | 2019-12-17 | 2020-01-21 | 18 | 2019-12-17 | 2020-01-21 | 3d | 0.53d |  |  | AnalistaD; JefeA; AnalistaD B | 24h | 784.68 | 858.96 |
| 29 | 1.6.2 | **Validación del diseño de la BD** | 27.24d | 2019-11-11 | 2019-12-20 |  | 2019-11-11 | 2020-01-07 | 28.67d | 11.33d |  |  |  | 24h | 809.44 | 809.44 |
| 30 | 1.6.2.1 | Validación del diseño de la BD (Diseñador) | 2d | 2019-12-18 | 2019-12-20 |  | 2019-12-18 | 2020-01-07 | 2d | 11.33d |  | finish no earlier than 2019-12-18 | AnalistaD | 16h | 473.6 | 473.6 |
| 31 | 1.6.2.2 | Validación del diseño de la BD(JP) | 1d | 2019-11-11 | 2019-11-11 |  | 2019-11-11 | 2019-11-11 | 1d | 27d | 0d |  | JefeA | 8h | 335.84 | 335.84 |
| 32 | 1.7 | **Construcción** | 33.57d | 2019-11-18 | 2020-01-21 |  | 2019-11-18 | 2020-01-15 | 29.04d | 0d |  |  |  | 312h | 9,195.09 | 9,124.97 |
| 33 | 1.7.1 | Construcción del Prototipo | 3d | 2019-12-17 | 2020-01-21 | 18SS+5d | 2019-12-13 | 2019-12-16 | 1.5d | 0d |  |  | ProgramadorJ; AnalistaP; AnalistaD B | 24h | 612.42 | 514.44 |
| 34 | 1.7.2 | **Construcción de la BD** | 29.32d | 2019-11-18 | 2020-01-15 |  | 2019-11-18 | 2020-01-15 | 29.04d | 4.25d |  |  |  | 40h | 1,136.64 | 1,136.64 |
| 35 | 1.7.2.1 | Construcción de la BD (Diseñador) | 1.5d | 2020-01-13 | 2020-01-15 | 31 | 2020-01-10 | 2020-01-15 | 3d | 4.25d |  | finish no earlier than 2020-01-07 | AnalistaD; AnalistaD B | 24h | 710.4 | 710.4 |
| 36 | 1.7.2.2 | Construcción de la BD (Programador) | 2d | 2019-11-18 | 2019-11-21 | 31 | 2019-11-18 | 2019-11-21 | 2d | 30.07d |  |  | AnalistaP | 16h | 426.24 | 426.24 |
| 37 | 1.7.3 | Codificación | 8.49d | 2019-12-10 | 2019-12-20 | 18FS-2d | 2019-12-03 | 2019-12-18 | 9.21d | 0.08d | 0d |  | ProgramadorJ; AnalistaP; AnalistaD; AnalistaW; JefeA; AnalistaD B | 248h | 7,446.03 | 7,473.89 |
| 38 | 1.8 | **Pruebas** | 5.33d | 2019-12-20 | 2020-01-13 |  | 2019-12-18 | 2020-01-10 | 5.33d | 0.08d | 0d |  |  | 96h | 2,358.77 | 2,358.77 |
| 39 | 1.8.1 | Pruebas Unitarias | 1d | 2019-12-20 | 2020-01-07 | 37 | 2019-12-18 | 2019-12-19 | 1d | 0.08d | 0d |  | AnalistaP; ProgramadorJ; AnalistaD | 24h | 579.76 | 579.76 |
| 40 | 1.8.2 | Pruebas de Integración | 2d | 2020-01-07 | 2020-01-09 | 39 | 2019-12-19 | 2020-01-07 | 2d | 0.08d | 0d |  | AnalistaP | 16h | 426.24 | 426.24 |
| 41 | 1.8.3 | Pruebas de Sistema | 2.33d | 2020-01-09 | 2020-01-13 | 40 | 2020-01-07 | 2020-01-10 | 2.33d | 0.75d |  |  | ProgramadorJ; AnalistaP; AnalistaD | 56h | 1,352.77 | 1,352.77 |
| 42 | 1.9 | **Demostración a los usuarios** | 5d | 2020-01-13 | 2020-01-20 |  | 2020-01-10 | 2020-01-17 | 5d | 0.75d |  |  |  | 48h | 1,448.8 | 1,448.8 |
| 43 | 1.9.1 | Entrenamiento de usuarios | 32h | 2020-01-13 | 2020-01-17 | 12, 38 | 2020-01-10 | 2020-01-16 | 32h | 0.75d | 0d |  | AnalistaP | 32h | 852.48 | 852.48 |
| 44 | 1.9.2 | Validación del producto por los usuarios | 1d | 2020-01-17 | 2020-01-20 | 43 | 2020-01-16 | 2020-01-17 | 1d | 0.75d |  |  | JefeA; AnalistaW | 16h | 596.32 | 596.32 |
| 45 | 1.10 | **Documentación** | 21d | 2019-12-04 | 2020-01-21 |  | 2019-12-02 | 2020-01-17 | 21d | 0.08d |  |  |  | 120h | 2,371.2 | 2,371.2 |
| 46 | 1.10.1 | Documentación técnica de proyecto | 10d | 2019-12-04 | 2019-12-20 | 37FF | 2019-12-02 | 2019-12-18 | 10d | 11.08d |  |  | Administrativo | 80h | 1,580.8 | 1,580.8 |
| 47 | 1.10.2 | Documentación de usuarios | 5d | 2020-01-14 | 2020-01-21 | 40FS+3d | 2020-01-10 | 2020-01-17 | 5d | 0.08d |  |  | Administrativo | 40h | 790.4 | 790.4 |
| 48 | 1.11 | BootCamp | 5d | 2019-11-27 | 2019-12-03 |  |  |  |  | 21.57d |  | start no earlier than 2019-11-27 | AnalistaD B | 40h | 1,184 |  |
